# БилетON

Schedule from MS Project XML, 2026-10-19 to 2026-12-11.
ЛР: WBS и диаграмма Ганта

## Calendars

- Стандартный (с праздником 04.11): Mon-Fri 08:00-12:00, 13:00-17:00; Sat-Sun off. Exceptions (off unless hours are given): 2026-11-04.

## Resources

| Resource | Group |
| --- | --- |
| PM / Backend | Команда БилетON |
| Lead Dev | Команда БилетON |
| Frontend | Команда БилетON |
| QA | Команда БилетON |
| Аналитик | Команда БилетON |

## Schedule

| ID | WBS | Task | Type | Duration | Start | Finish | Predecessors | Deadline | Resources |
| --- | --- | --- | --- | --- | --- | --- | --- | --- | --- |
| 1 | 1 | **Управление проектом и документация (командный менеджмент)** |  | 39d | 2026-10-19 08:00 | 2026-12-11 17:00 |  |  |  |
| 2 | 1.0 | **Еженедельные практики (повторяющиеся задачи)** |  | 35d | 2026-10-19 09:00 | 2026-12-07 14:00 |  |  |  |
| 3 | 1.0.1 | **Модерация Scrum-событий (планирование спринтов, дейли, ретро)** |  | 35d | 2026-10-19 09:00 | 2026-12-07 11:00 |  |  |  |
| 4 | 1.0.1.1 | Модерация Scrum-событий (планирование спринтов, дейли, ретро) — 19.10.2026 |  | 0.25d | 2026-10-19 09:00 | 2026-10-19 11:00 |  |  | PM / Backend |
| 5 | 1.0.1.2 | Модерация Scrum-событий (планирование спринтов, дейли, ретро) — 26.10.2026 |  | 0.25d | 2026-10-26 09:00 | 2026-10-26 11:00 |  |  | PM / Backend |
| 6 | 1.0.1.3 | Модерация Scrum-событий (планирование спринтов, дейли, ретро) — 02.11.2026 |  | 0.25d | 2026-11-02 09:00 | 2026-11-02 11:00 |  |  | PM / Backend |
| 7 | 1.0.1.4 | Модерация Scrum-событий (планирование спринтов, дейли, ретро) — 09.11.2026 |  | 0.25d | 2026-11-09 09:00 | 2026-11-09 11:00 |  |  | PM / Backend |
| 8 | 1.0.1.5 | Модерация Scrum-событий (планирование спринтов, дейли, ретро) — 16.11.2026 |  | 0.25d | 2026-11-16 09:00 | 2026-11-16 11:00 |  |  | PM / Backend |
| 9 | 1.0.1.6 | Модерация Scrum-событий (планирование спринтов, дейли, ретро) — 23.11.2026 |  | 0.25d | 2026-11-23 09:00 | 2026-11-23 11:00 |  |  | PM / Backend |
| 10 | 1.0.1.7 | Модерация Scrum-событий (планирование спринтов, дейли, ретро) — 30.11.2026 |  | 0.25d | 2026-11-30 09:00 | 2026-11-30 11:00 |  |  | PM / Backend |
| 11 | 1.0.1.8 | Модерация Scrum-событий (планирование спринтов, дейли, ретро) — 07.12.2026 |  | 0.25d | 2026-12-07 09:00 | 2026-12-07 11:00 |  |  | PM / Backend |
| 12 | 1.0.2 | **Участие в ежедневных летучках и обновление статусов в Trello/Jira** |  | 35d | 2026-10-19 11:00 | 2026-12-07 12:00 |  |  |  |
| 13 | 1.0.2.1 | Участие в ежедневных летучках и обновление статусов в Trello/Jira — 19.10.2026 |  | 0.12d | 2026-10-19 11:00 | 2026-10-19 12:00 |  |  | PM / Backend; Lead Dev; Frontend; QA; Аналитик |
| 14 | 1.0.2.2 | Участие в ежедневных летучках и обновление статусов в Trello/Jira — 26.10.2026 |  | 0.12d | 2026-10-26 11:00 | 2026-10-26 12:00 |  |  | PM / Backend; Lead Dev; Frontend; QA; Аналитик |
| 15 | 1.0.2.3 | Участие в ежедневных летучках и обновление статусов в Trello/Jira — 02.11.2026 |  | 0.12d | 2026-11-02 11:00 | 2026-11-02 12:00 |  |  | PM / Backend; Lead Dev; Frontend; QA; Аналитик |
| 16 | 1.0.2.4 | Участие в ежедневных летучках и обновление статусов в Trello/Jira — 09.11.2026 |  | 0.12d | 2026-11-09 11:00 | 2026-11-09 12:00 |  |  | PM / Backend; Lead Dev; Frontend; QA; Аналитик |
| 17 | 1.0.2.5 | Участие в ежедневных летучках и обновление статусов в Trello/Jira — 16.11.2026 |  | 0.12d | 2026-11-16 11:00 | 2026-11-16 12:00 |  |  | PM / Backend; Lead Dev; Frontend; QA; Аналитик |
| 18 | 1.0.2.6 | Участие в ежедневных летучках и обновление статусов в Trello/Jira — 23.11.2026 |  | 0.12d | 2026-11-23 11:00 | 2026-11-23 12:00 |  |  | PM / Backend; Lead Dev; Frontend; QA; Аналитик |
| 19 | 1.0.2.7 | Участие в ежедневных летучках и обновление статусов в Trello/Jira — 30.11.2026 |  | 0.12d | 2026-11-30 11:00 | 2026-11-30 12:00 |  |  | PM / Backend; Lead Dev; Frontend; QA; Аналитик |
| 20 | 1.0.2.8 | Участие в ежедневных летучках и обновление статусов в Trello/Jira — 07.12.2026 |  | 0.12d | 2026-12-07 11:00 | 2026-12-07 12:00 |  |  | PM / Backend; Lead Dev; Frontend; QA; Аналитик |
| 21 | 1.0.3 | **Ведение реестра рисков и расчёт метрик EVM** |  | 35d | 2026-10-19 13:00 | 2026-12-07 14:00 |  |  |  |
| 22 | 1.0.3.1 | Ведение реестра рисков и расчёт метрик EVM — 19.10.2026 |  | 0.12d | 2026-10-19 13:00 | 2026-10-19 14:00 |  |  | PM / Backend |
| 23 | 1.0.3.2 | Ведение реестра рисков и расчёт метрик EVM — 26.10.2026 |  | 0.12d | 2026-10-26 13:00 | 2026-10-26 14:00 |  |  | PM / Backend |
| 24 | 1.0.3.3 | Ведение реестра рисков и расчёт метрик EVM — 02.11.2026 |  | 0.12d | 2026-11-02 13:00 | 2026-11-02 14:00 |  |  | PM / Backend |
| 25 | 1.0.3.4 | Ведение реестра рисков и расчёт метрик EVM — 09.11.2026 |  | 0.12d | 2026-11-09 13:00 | 2026-11-09 14:00 |  |  | PM / Backend |
| 26 | 1.0.3.5 | Ведение реестра рисков и расчёт метрик EVM — 16.11.2026 |  | 0.12d | 2026-11-16 13:00 | 2026-11-16 14:00 |  |  | PM / Backend |
| 27 | 1.0.3.6 | Ведение реестра рисков и расчёт метрик EVM — 23.11.2026 |  | 0.12d | 2026-11-23 13:00 | 2026-11-23 14:00 |  |  | PM / Backend |
| 28 | 1.0.3.7 | Ведение реестра рисков и расчёт метрик EVM — 30.11.2026 |  | 0.12d | 2026-11-30 13:00 | 2026-11-30 14:00 |  |  | PM / Backend |
| 29 | 1.0.3.8 | Ведение реестра рисков и расчёт метрик EVM — 07.12.2026 |  | 0.12d | 2026-12-07 13:00 | 2026-12-07 14:00 |  |  | PM / Backend |
| 30 | 1.1 | Разработка Устава проекта, согласование со стейкхолдерами |  | 8h | 2026-10-19 08:00 | 2026-10-19 17:00 |  |  | PM / Backend |
| 31 | 1.2 | Декомпозиция WBS, построение диаграммы Ганта |  | 4h | 2026-10-20 08:00 | 2026-10-20 12:00 | 30 |  | PM / Backend; Lead Dev; Frontend; QA; Аналитик |
| 32 | 1.6 | Финальная ретроспектива (Start-Stop-Continue) |  | 2h | 2026-12-09 11:00 | 2026-12-09 14:00 | 44 |  | PM / Backend; Lead Dev; Frontend; QA; Аналитик |
| 33 | 1.7 | Внедрение и сопровождение User Manual |  | 4h | 2026-12-04 16:00 | 2026-12-07 11:00 | 85 |  | PM / Backend |
| 34 | 1.8 | Сборка портфолио и подготовка презентации к защите |  | 8h | 2026-12-07 16:00 | 2026-12-08 16:00 | 86 |  | PM / Backend |
| 35 | 1.9 | Подготовка к защите, сдача проекта |  | 4h | 2026-12-09 14:00 | 2026-12-10 09:00 | 32, 33, 34 |  | PM / Backend; Lead Dev; Frontend; QA; Аналитик |
| 36 | 1.10 | Защита проекта | milestone | 0h | 2026-12-10 09:00 | 2026-12-10 09:00 | 35 | 2026-12-13 17:00 |  |
| 37 | 1.11 | Проект завершён (дедлайн 13.12) | milestone | 0h | 2026-12-11 17:00 | 2026-12-11 17:00 | 36 |  |  |

Notes:
- 2: Три постоянные практики команды. Каждая выполняется один раз в неделю, по понедельникам, с реальной длительностью 1-2 ч.
- 3: Повторяющаяся задача: каждый понедельник, 2 ч.
- 4: Экземпляр повторяющейся задачи (неделя 1 из 8).
- 5: Экземпляр повторяющейся задачи (неделя 2 из 8).
- 6: Экземпляр повторяющейся задачи (неделя 3 из 8).
- 7: Экземпляр повторяющейся задачи (неделя 4 из 8).
- 8: Экземпляр повторяющейся задачи (неделя 5 из 8).
- 9: Экземпляр повторяющейся задачи (неделя 6 из 8).
- 10: Экземпляр повторяющейся задачи (неделя 7 из 8).
- 11: Экземпляр повторяющейся задачи (неделя 8 из 8).
- 12: Повторяющаяся задача: каждый понедельник, 1 ч; участвует вся команда.
- 13: Экземпляр повторяющейся задачи (неделя 1 из 8).
- 14: Экземпляр повторяющейся задачи (неделя 2 из 8).
- 15: Экземпляр повторяющейся задачи (неделя 3 из 8).
- 16: Экземпляр повторяющейся задачи (неделя 4 из 8).
- 17: Экземпляр повторяющейся задачи (неделя 5 из 8).
- 18: Экземпляр повторяющейся задачи (неделя 6 из 8).
- 19: Экземпляр повторяющейся задачи (неделя 7 из 8).
- 20: Экземпляр повторяющейся задачи (неделя 8 из 8).
- 21: Повторяющаяся задача: каждый понедельник, 1 ч.
- 22: Экземпляр повторяющейся задачи (неделя 1 из 8).
- 23: Экземпляр повторяющейся задачи (неделя 2 из 8).
- 24: Экземпляр повторяющейся задачи (неделя 3 из 8).
- 25: Экземпляр повторяющейся задачи (неделя 4 из 8).
- 26: Экземпляр повторяющейся задачи (неделя 5 из 8).
- 27: Экземпляр повторяющейся задачи (неделя 6 из 8).
- 28: Экземпляр повторяющейся задачи (неделя 7 из 8).
- 29: Экземпляр повторяющейся задачи (неделя 8 из 8).
- 30: Роль: [PM]. Плановая длительность по WBS: 8 ч.
- 31: Роль: [Вся команда]. Плановая длительность по WBS: 4 ч.
- 32: Роль: [Вся команда]. Плановая длительность по WBS: 2 ч.
- 33: Роль: [PM]. Плановая длительность по WBS: 4 ч.
- 34: Роль: [PM]. Плановая длительность по WBS: 8 ч.
- 35: Роль: [Вся команда]. Плановая длительность по WBS: 4 ч.

| ID | WBS | Task | Type | Duration | Start | Finish | Predecessors | Resources |
| --- | --- | --- | --- | --- | --- | --- | --- | --- |
| 38 | 2.0 | **Организация инфраструктуры разработки (DevOps)** |  | 35.38d | 2026-10-20 08:00 | 2026-12-09 11:00 |  |  |
| 39 | 2.1 | Инициализация Git-репозитория, настройка Git-flow (main, dev, feature) |  | 4h | 2026-10-20 08:00 | 2026-10-20 12:00 | 30 | PM / Backend |
| 40 | 2.2 | Разработка инструкции по локальному запуску проекта (README) |  | 4h | 2026-10-20 13:00 | 2026-10-20 17:00 | 39 | Lead Dev |
| 41 | 2.3 | Настройка пайплайна CI (GitHub Actions: линтеры/тесты) |  | 6h | 2026-10-21 08:00 | 2026-10-21 15:00 | 39, 40 | PM / Backend |
| 42 | 2.4 | Развёртывание локальной СУБД PostgreSQL для тестов |  | 4h | 2026-10-20 13:00 | 2026-10-20 17:00 | 39 | QA |
| 43 | 2.5 | Настройка скриптов деплоя на тестовый сервер (VPS) |  | 6h | 2026-10-21 15:00 | 2026-10-22 12:00 | 41 | Lead Dev |
| 44 | 2.6 | Деплой финальной версии на сервер |  | 4h | 2026-12-08 16:00 | 2026-12-09 11:00 | 88, 43 | Lead Dev |
| 45 | 3.0 | **Модуль «Авторизация и профиль» (Спринт 1)** |  | 3.75d | 2026-10-20 13:00 | 2026-10-26 10:00 |  |  |
| 46 | 3.1 | Написание Use Cases и критериев DoD для входа/регистрации |  | 4h | 2026-10-20 13:00 | 2026-10-20 17:00 | 31 | Аналитик; QA |
| 47 | 3.2 | Проектирование и создание таблицы users |  | 4h | 2026-10-21 08:00 | 2026-10-21 12:00 | 46, 39 | PM / Backend |
| 48 | 3.3 | Реализация JWT-авторизации и разграничения ролей |  | 12h | 2026-10-21 13:00 | 2026-10-22 17:00 | 47 | Lead Dev |
| 49 | 3.4 | Вёрстка страниц входа и регистрации по макету |  | 8h | 2026-10-21 08:00 | 2026-10-21 17:00 | 46 | Frontend |
| 50 | 3.5 | Интеграция форм с API авторизации (сохранение токена) |  | 6h | 2026-10-23 08:00 | 2026-10-23 15:00 | 48, 49 | Frontend |
| 51 | 3.6 | Написание чек-листа тестирования безопасности |  | 2h | 2026-10-21 08:00 | 2026-10-21 10:00 | 46 | Аналитик; QA |
| 52 | 3.7 | Прогон тестов, заведение багов в Jira |  | 4h | 2026-10-23 15:00 | 2026-10-26 10:00 | 50, 51, 42 | Frontend; QA |
| 53 | 3.8 | Спринт 1 принят | milestone | 0h | 2026-10-26 10:00 | 2026-10-26 10:00 | 52 |  |
| 54 | 4.0 | **Модуль «Афиша и сеансы» (Спринт 2)** |  | 3.5d | 2026-11-02 08:00 | 2026-11-06 12:00 |  |  |
| 55 | 4.1 | Формирование User Stories на просмотр афиши и расписания |  | 2h | 2026-11-02 08:00 | 2026-11-02 10:00 | 53FS+38h | Аналитик |
| 56 | 4.2 | Создание таблиц movies, sessions |  | 6h | 2026-11-02 10:00 | 2026-11-02 17:00 | 55 | PM / Backend |
| 57 | 4.3 | Разработка эндпоинтов GET /movies и GET /sessions |  | 8h | 2026-11-03 08:00 | 2026-11-03 17:00 | 56, 48 | Lead Dev |
| 58 | 4.4 | Вёрстка карточек фильмов и страницы выбора сеанса |  | 10h | 2026-11-02 10:00 | 2026-11-03 12:00 | 55 | Frontend |
| 59 | 4.5 | Подключение API афиши к интерфейсу |  | 6h | 2026-11-05 08:00 | 2026-11-05 15:00 | 57, 58 | Frontend |
| 60 | 4.6 | Написание тест-кейсов на отображение пустого расписания |  | 2h | 2026-11-02 10:00 | 2026-11-02 12:00 | 55 | Аналитик; QA |
| 61 | 4.7 | Проверка вёрстки на разных разрешениях, фикс багов |  | 6h | 2026-11-05 15:00 | 2026-11-06 12:00 | 59, 60 | Frontend; QA |
| 62 | 4.8 | Спринт 2 принят | milestone | 0h | 2026-11-06 12:00 | 2026-11-06 12:00 | 61 |  |

Notes:
- 39: Роль: [PM / Backend]. Плановая длительность по WBS: 4 ч.
- 40: Роль: [Lead Dev]. Плановая длительность по WBS: 4 ч.
- 41: Роль: [PM / Backend]. Плановая длительность по WBS: 6 ч.
- 42: Роль: [QA]. Плановая длительность по WBS: 4 ч.
- 43: Роль: [Lead Dev]. Плановая длительность по WBS: 6 ч.
- 44: Роль: [Lead Dev]. Плановая длительность по WBS: 4 ч.
- 46: Роль: [Аналитик / QA]. Плановая длительность по WBS: 4 ч.
- 47: Роль: [PM / Backend]. Плановая длительность по WBS: 4 ч.
- 48: Роль: [Lead Dev]. Плановая длительность по WBS: 12 ч.
- 49: Роль: [Frontend]. Плановая длительность по WBS: 8 ч.
- 50: Роль: [Frontend]. Плановая длительность по WBS: 6 ч.
- 51: Роль: [Аналитик / QA]. Плановая длительность по WBS: 2 ч.
- 52: Роль: [Frontend / QA]. Плановая длительность по WBS: 4 ч.
- 55: Роль: [Аналитик]. Плановая длительность по WBS: 2 ч.
- 56: Роль: [PM / Backend]. Плановая длительность по WBS: 6 ч.
- 57: Роль: [Lead Dev]. Плановая длительность по WBS: 8 ч.
- 58: Роль: [Frontend]. Плановая длительность по WBS: 10 ч.
- 59: Роль: [Frontend]. Плановая длительность по WBS: 6 ч.
- 60: Роль: [Аналитик / QA]. Плановая длительность по WBS: 2 ч.
- 61: Роль: [Frontend / QA]. Плановая длительность по WBS: 6 ч.

| ID | WBS | Task | Type | Duration | Start | Finish | Predecessors | Resources |
| --- | --- | --- | --- | --- | --- | --- | --- | --- |
| 63 | 5.0 | **Модуль «Схема зала и бронирование» (Спринт 3)** |  | 5d | 2026-11-16 08:00 | 2026-11-20 17:00 |  |  |
| 64 | 5.1 | Описание логики блокировки мест при одновременном бронировании |  | 4h | 2026-11-16 08:00 | 2026-11-16 12:00 | 62FS+44h | Аналитик |
| 65 | 5.2 | Разработка структуры таблиц halls, seats, bookings |  | 6h | 2026-11-16 13:00 | 2026-11-17 10:00 | 64 | PM / Backend |
| 66 | 5.3 | API POST /bookings с SELECT FOR UPDATE (защита от двойных продаж) |  | 16h | 2026-11-17 10:00 | 2026-11-19 10:00 | 65 | Lead Dev |
| 67 | 5.4 | Вёрстка интерактивной схемы зала (CSS Grid, статусы мест) |  | 14h | 2026-11-16 13:00 | 2026-11-18 10:00 | 64 | Frontend |
| 68 | 5.5 | Интеграция: запрос на бронь и обработка HTTP 409 |  | 8h | 2026-11-19 10:00 | 2026-11-20 10:00 | 66, 67 | Frontend |
| 69 | 5.6 | Скрипт имитации одновременного бронирования (нагрузочный тест) |  | 8h | 2026-11-19 10:00 | 2026-11-20 10:00 | 66 | Аналитик; QA |
| 70 | 5.7 | Прогон сценариев, проверка отката транзакции |  | 6h | 2026-11-20 10:00 | 2026-11-20 17:00 | 68, 69 | Frontend; QA |
| 71 | 5.8 | Спринт 3 принят | milestone | 0h | 2026-11-20 17:00 | 2026-11-20 17:00 | 70 |  |
| 72 | 6.0 | **Спринт 4. Оплата, QR, панель контроллера и финальное тестирование** |  | 6.88d | 2026-11-30 08:00 | 2026-12-08 16:00 |  |  |
| 73 | 6.1 | Сценарий успешной/неуспешной оплаты и формат данных для QR |  | 3h | 2026-11-30 08:00 | 2026-11-30 11:00 | 71FS+40h | Аналитик |
| 74 | 6.2 | Создание таблицы tickets, связь с bookings |  | 4h | 2026-11-30 11:00 | 2026-11-30 16:00 | 73 | PM / Backend |
| 75 | 6.3 | Имитация оплаты, генерация QR (qrcode), API получения QR |  | 12h | 2026-11-30 16:00 | 2026-12-02 11:00 | 74 | Lead Dev |
| 76 | 6.4 | Вёрстка страницы оплаты и личного кабинета с билетами |  | 8h | 2026-11-30 11:00 | 2026-12-01 11:00 | 73 | Frontend |
| 77 | 6.5 | Отрисовка QR-кода на экране телефона (base64 через API) |  | 6h | 2026-12-02 11:00 | 2026-12-03 09:00 | 75, 76 | Frontend |
| 78 | 6.6 | Тестирование сценариев сбоя оплаты |  | 4h | 2026-12-02 11:00 | 2026-12-02 16:00 | 75 | Аналитик; QA |
| 79 | 6.7 | Проверка читаемости QR-кода обычным сканером |  | 4h | 2026-12-03 09:00 | 2026-12-03 14:00 | 77 | Frontend; QA |
| 80 | 6.8 | Требования к интерфейсу контроллера (ввод кода/сканирование) |  | 2h | 2026-11-30 11:00 | 2026-11-30 14:00 | 73 | Аналитик |
| 81 | 6.9 | API валидации билета (действителен/просрочен/подделка) |  | 6h | 2026-12-02 11:00 | 2026-12-03 09:00 | 75, 80 | Lead Dev |
| 82 | 6.10 | Вёрстка страницы контроллера |  | 6h | 2026-12-03 09:00 | 2026-12-03 16:00 | 80, 77 | Frontend |
| 83 | 6.11 | Интеграция страницы контроллера с API валидации |  | 4h | 2026-12-03 16:00 | 2026-12-04 11:00 | 81, 82 | Frontend |
| 84 | 6.12 | Создание базы тестовых QR-кодов |  | 4h | 2026-12-03 09:00 | 2026-12-03 14:00 | 81 | Аналитик; QA |
| 85 | 6.13 | Тестирование проходного режима |  | 4h | 2026-12-04 11:00 | 2026-12-04 16:00 | 83, 84 | Frontend; QA |
| 86 | 6.14 | End-to-End тестирование: от регистрации до прохода по QR |  | 8h | 2026-12-04 16:00 | 2026-12-07 16:00 | 78, 79, 85 | PM / Backend; Lead Dev; Frontend; QA; Аналитик |
| 87 | 6.15 | Регрессионное тестирование |  | 8h | 2026-12-07 16:00 | 2026-12-08 16:00 | 86 | Аналитик; QA |
| 88 | 6.16 | Спринт 4 принят | milestone | 0h | 2026-12-08 16:00 | 2026-12-08 16:00 | 87 |  |

Notes:
- 64: Роль: [Аналитик]. Плановая длительность по WBS: 4 ч.
- 65: Роль: [PM / Backend]. Плановая длительность по WBS: 6 ч.
- 66: Роль: [Lead Dev]. Плановая длительность по WBS: 16 ч.
- 67: Роль: [Frontend]. Плановая длительность по WBS: 14 ч.
- 68: Роль: [Frontend]. Плановая длительность по WBS: 8 ч.
- 69: Роль: [Аналитик / QA]. Плановая длительность по WBS: 8 ч.
- 70: Роль: [Frontend / QA]. Плановая длительность по WBS: 6 ч.
- 73: Роль: [Аналитик]. Плановая длительность по WBS: 3 ч.
- 74: Роль: [PM / Backend]. Плановая длительность по WBS: 4 ч.
- 75: Роль: [Lead Dev]. Плановая длительность по WBS: 12 ч.
- 76: Роль: [Frontend]. Плановая длительность по WBS: 8 ч.
- 77: Роль: [Frontend]. Плановая длительность по WBS: 6 ч.
- 78: Роль: [Аналитик / QA]. Плановая длительность по WBS: 4 ч.
- 79: Роль: [Frontend / QA]. Плановая длительность по WBS: 4 ч.
- 80: Роль: [Аналитик]. Плановая длительность по WBS: 2 ч.
- 81: Роль: [Lead Dev]. Плановая длительность по WBS: 6 ч.
- 82: Роль: [Frontend]. Плановая длительность по WBS: 6 ч.
- 83: Роль: [Frontend]. Плановая длительность по WBS: 4 ч.
- 84: Роль: [Аналитик / QA]. Плановая длительность по WBS: 4 ч.
- 85: Роль: [Frontend / QA]. Плановая длительность по WBS: 4 ч.
- 86: Роль: [Вся команда]. Плановая длительность по WBS: 8 ч.
- 87: Роль: [Аналитик / QA]. Плановая длительность по WBS: 8 ч.
